| activity_id | activity_name | duration_workdays | is_milestone | milestone_type | early_start | early_finish | late_start | late_finish | total_float | free_float | is_critical |
| --- | --- | --- | --- | --- | --- | --- | --- | --- | --- | --- | --- |
| ACT-01 | Project Notice to Proceed & Site Possession | 0 | True | START | 2026-11-02 | 2026-11-02 | 2026-11-02 | 2026-11-02 | 0 | 0 | True |
| ACT-02 | Statutory Permits & Environmental Setup | 3 |  |  | 2026-11-02 | 2026-11-04 | 2026-11-03 | 2026-11-05 | 1 | 1 |  |
| ACT-03 | Dilapidation Survey & Instrumentation Baseline | 4 |  |  | 2026-11-02 | 2026-11-05 | 2026-11-02 | 2026-11-05 | 0 | 0 | True |
| ACT-04 | Guide Wall Construction (Zone A & B) | 5 |  |  | 2026-11-06 | 2026-11-12 | 2026-11-06 | 2026-11-12 | 0 | 0 | True |
| ACT-05 | Diaphragm Wall Trenching & Bentonite Support | 8 |  |  | 2026-11-13 | 2026-11-24 | 2026-11-13 | 2026-11-24 | 0 | 0 | True |
| ACT-06 | D-Wall Rebar Cage Lowering & Concreting | 6 |  |  | 2026-11-25 | 2026-12-02 | 2026-11-25 | 2026-12-02 | 0 | 0 | True |
| ACT-07 | Bored Piling Works (Dia 1200mm, Zone A) | 10 |  |  | 2026-12-03 | 2026-12-16 | 2026-12-03 | 2026-12-16 | 0 | 0 | True |
| ACT-08 | Bored Piling Works (Dia 1200mm, Zone B) | 10 |  |  | 2026-12-17 | 2026-12-30 | 2026-12-17 | 2026-12-30 | 0 | 0 | True |
| ACT-09 | Sonic Logging & Pile Dynamic Analysis (PDA) | 4 |  |  | 2026-12-17 | 2026-12-22 | 2026-12-25 | 2026-12-30 | 6 | 6 |  |
| ACT-10 | King Post Installation for Strutting Support | 5 |  |  | 2026-12-31 | 2027-01-06 | 2026-12-31 | 2027-01-06 | 0 | 0 | True |
| ACT-11 | Deep Dewatering Well Installation & Pump Test | 6 |  |  | 2026-11-17 | 2026-11-24 | 2026-12-21 | 2026-12-28 | 24 | 21 |  |
| ACT-12 | Stage 1 Excavation to Strut Level 1 (-3.5m) | 7 |  |  | 2026-12-24 | 2027-01-01 | 2026-12-29 | 2027-01-06 | 3 | 3 |  |
| ACT-13 | Installation & Pre-loading of Steel Strut 1 | 5 |  |  | 2027-01-07 | 2027-01-13 | 2027-01-07 | 2027-01-13 | 0 | 0 | True |
| ACT-14 | Stage 2 Bulk Excavation to Formation (-8.5m) | 12 |  |  | 2027-01-14 | 2027-01-29 | 2027-01-14 | 2027-01-29 | 0 | 0 | True |
| ACT-15 | Groundwater Ingress Mitigation & Grouting | 5 |  |  | 2027-02-01 | 2027-02-05 | 2027-02-01 | 2027-02-05 | 0 | 0 | True |
| ACT-16 | Ground Settlement Monitoring & Pin SP-04 | 4 |  |  | 2027-01-19 | 2027-01-22 | 2027-02-05 | 2027-02-10 | 13 | 13 |  |
| ACT-17 | Final Trimming & Blinding Concrete Casting | 4 |  |  | 2027-02-08 | 2027-02-11 | 2027-02-08 | 2027-02-11 | 0 | 0 | True |
| ACT-18 | ERSS Completion & Handover Milestone | 0 | True | FINISH | 2027-02-11 | 2027-02-11 | 2027-02-11 | 2027-02-11 | 0 | 0 | True |
| ACT-19 | Sub-slab Drainage & Waterproofing Membrane | 5 |  |  | 2027-02-12 | 2027-02-18 | 2027-02-12 | 2027-02-18 | 0 | 0 | True |
| ACT-20 | Base Raft Rebar Fixing (Zone A) | 6 |  |  | 2027-02-19 | 2027-02-26 | 2027-02-19 | 2027-02-26 | 0 | 0 | True |
| ACT-21 | Base Raft Rebar Fixing (Zone B) | 6 |  |  | 2027-02-16 | 2027-02-23 | 2027-02-24 | 2027-03-03 | 6 | 6 |  |
| ACT-22 | Base Raft Mass Concreting (C40/50 Pour) | 4 |  |  | 2027-03-01 | 2027-03-04 | 2027-03-01 | 2027-03-04 | 0 | 0 | True |
| ACT-23 | Retaining Wall Rebar, Formwork & Concreting | 8 |  |  | 2027-03-05 | 2027-03-16 | 2027-03-05 | 2027-03-16 | 0 | 0 | True |
| ACT-24 | Strut Level 1 Removal & Destressing Protocol | 3 |  |  | 2027-03-17 | 2027-03-19 | 2027-03-17 | 2027-03-19 | 0 | 0 | True |
| ACT-25 | B1 Suspended Slab Casting | 7 |  |  | 2027-03-22 | 2027-03-30 | 2027-03-22 | 2027-03-30 | 0 | 0 | True |
| ACT-26 | Substructure Practical Completion Milestone | 0 | True | FINISH | 2027-03-30 | 2027-03-30 | 2027-03-30 | 2027-03-30 | 0 | 0 | True |
